# Raiden

Schedule from MS Project XML, 2019-07-02 to 2019-09-13.

## Calendars

- Standard: Mon-Sat 08:00-12:00, 13:00-17:00; Sun off.

## Resources

| Resource | Group | Rate |
| --- | --- | --- |
| Unassigned |  |  |
| Tyson |  |  |
| Jason |  |  |
| Dr Hunt |  |  |
| AWS - EC2 (p3.2xlarge) | Cloud | 3 |
| AWS - S3 | Cloud | 25 |
| ML Computer | Hardware |  |
| Video Library (labelled) | Footage |  |
| Video Library (unlabelled) | Footage |  |
| Test Footage | Footage |  |
| HS Spreadsheet | Spreadsheet |  |

## Schedule

| ID | WBS | Task | Type | Duration | Start | Finish | Predecessors | Baseline start | Baseline finish | Constraint | Deadline | Resources |
| --- | --- | --- | --- | --- | --- | --- | --- | --- | --- | --- | --- | --- |
| 1 | 1 | Project Start | milestone | 100e% | 2019-07-02 | 2019-07-02 |  | 2019-07-02 | 2019-07-02 |  |  |  |
| 2 | 2 | **PLANNING** |  | 1000e%? | 2019-07-03 | 2019-07-13 |  | 2019-07-03 | 2019-07-13 |  |  |  |
| 3 | 2.1 | PM scheduling |  | 200e%? | 2019-07-03 | 2019-07-04 |  | 2019-07-03 | 2019-07-04 | start no earlier than 2019-07-03 |  |  |
| 4 | 2.2 | Hardware and environment setup |  | 300e% | 2019-07-08 | 2019-07-10 |  | 2019-07-08 | 2019-07-10 | start no earlier than 2019-07-08 |  | Tyson; ML Computer |
| 5 | 2.3 | **Deep Learning Research** |  | 600e%? | 2019-07-05 | 2019-07-11 | 3 | 2019-07-05 | 2019-07-11 |  |  |  |
| 6 | 2.3.1 | Tensorflow/keras tutorial |  | 100e%? | 2019-07-05 | 2019-07-05 |  | 2019-07-05 | 2019-07-05 |  |  |  |
| 7 | 2.3.2 | Object detection tutorial |  | 100e%? | 2019-07-06 | 2019-07-06 | 6 | 2019-07-06 | 2019-07-06 |  |  |  |
| 8 | 2.3.3 | ML Model exploration |  | 400e% | 2019-07-08 | 2019-07-11 | 7 | 2019-07-08 | 2019-07-11 |  |  | Tyson; Jason |
| 9 | 2.4 | Scope and requirements |  | 100e%? | 2019-07-12 | 2019-07-12 | 5 | 2019-07-12 | 2019-07-12 |  |  | Tyson; Jason |
| 10 | 2.5 | Project Plan Compilation |  | 100e% | 2019-07-13 | 2019-07-13 | 9 | 2019-07-13 | 2019-07-13 | finish no later than 2019-07-15 |  | Tyson; Jason |
| 11 | 2.6 | Project Plan Submission | milestone | 0e% | 2019-07-13 | 2019-07-13 | 10 | 2019-07-13 | 2019-07-13 | finish no later than 2019-07-15 | 2019-07-15 | Tyson; Jason |
| 12 | 3 | **EXECUTION** |  | 2400e%? | 2019-07-15 | 2019-08-10 |  | 2019-07-15 | 2019-08-10 |  |  |  |
| 13 | 3.1 | **Sprint 1** |  | 600e%? | 2019-07-15 | 2019-07-20 |  | 2019-07-15 | 2019-07-20 |  |  |  |
| 14 | 3.1.1 | Data Aquisition |  | 100e%? | 2019-07-15 | 2019-07-15 |  | 2019-07-15 | 2019-07-15 | start no earlier than 2019-07-15 |  | Dr Hunt; Tyson; Video Library (labelled) |
| 15 | 3.1.2 | Manual Data Labelling |  | 500e%? | 2019-07-16 | 2019-07-20 | 14 | 2019-07-16 | 2019-07-20 | start no earlier than 2019-07-15 |  |  |
| 16 | 3.1.3 | **Pipeline setup** |  | 400e%? | 2019-07-16 | 2019-07-19 |  | 2019-07-16 | 2019-07-19 |  |  |  |
| 17 | 3.1.3.1 | Cine to image sequence script |  | 100e%? | 2019-07-16 | 2019-07-16 | 14 | 2019-07-16 | 2019-07-16 |  |  | Test Footage; Tyson |
| 18 | 3.1.3.2 | Export CINE to Image sequence |  | 100e%? | 2019-07-17 | 2019-07-17 | 17 | 2019-07-17 | 2019-07-17 |  |  |  |
| 19 | 3.1.3.3 | Spreadsheet <-> JSON/CSV metadata |  | 100e%? | 2019-07-16 | 2019-07-16 | 14 | 2019-07-16 | 2019-07-16 |  |  | HS Spreadsheet; Jason |
| 20 | 3.1.3.4 | Time to frame scripts |  | 100e%? | 2019-07-19 | 2019-07-19 | 14, 19 | 2019-07-19 | 2019-07-19 | start no earlier than 2019-07-19 |  |  |
| 21 | 3.1.4 | Training Data input pre-processing |  | 200e%? | 2019-07-17 | 2019-07-18 | 17, 19 | 2019-07-17 | 2019-07-18 |  |  |  |
| 22 | 3.1.5 | Sprint Review/Planning |  | 100e%? | 2019-07-20 | 2019-07-20 | 16, 21 | 2019-07-20 | 2019-07-20 |  |  |  |
| 23 | 3.2 | **Sprint 2** |  | 600e%? | 2019-07-22 | 2019-07-27 |  | 2019-07-22 | 2019-07-27 |  |  |  |
| 24 | 3.2.1 | Model selection - Network 1 (Individual images) |  | 100e%? | 2019-07-22 | 2019-07-22 | 22 | 2019-07-22 | 2019-07-22 |  |  |  |
| 25 | 3.2.2 | Feature development |  | 100e%? | 2019-07-23 | 2019-07-23 | 24 | 2019-07-23 | 2019-07-23 |  |  |  |
| 26 | 3.2.3 | Data preperation |  | 150e% | 2019-07-24 | 2019-07-25 | 25 | 2019-07-24 | 2019-07-25 |  |  |  |
| 27 | 3.2.4 | Training |  | 100e%? | 2019-07-25 | 2019-07-26 | 26 | 2019-07-25 | 2019-07-26 |  |  |  |
| 28 | 3.2.5 | Validation |  | 25e% | 2019-07-26 | 2019-07-26 | 27 | 2019-07-26 | 2019-07-26 |  |  |  |
| 29 | 3.2.6 | Evaluation |  | 25e% | 2019-07-26 | 2019-07-26 | 28 | 2019-07-26 | 2019-07-26 |  |  |  |
| 30 | 3.2.7 | Sprint Review/Planning |  | 100e%? | 2019-07-27 | 2019-07-27 | 29 | 2019-07-27 | 2019-07-27 |  |  |  |

| ID | WBS | Task | Duration | Start | Finish | Predecessors | Baseline start | Baseline finish | Resources |
| --- | --- | --- | --- | --- | --- | --- | --- | --- | --- |
| 31 | 3.3 | **Sprint 3** | 600e%? | 2019-07-29 | 2019-08-03 |  | 2019-07-29 | 2019-08-03 |  |
| 32 | 3.3.1 | Model Selection - Network 2 (Video events) | 100e%? | 2019-07-29 | 2019-07-29 | 30 | 2019-07-29 | 2019-07-29 |  |
| 33 | 3.3.2 | Feature additions | 100e%? | 2019-07-30 | 2019-07-30 | 32 | 2019-07-30 | 2019-07-30 |  |
| 34 | 3.3.3 | Data preperation | 100e% | 2019-07-31 | 2019-07-31 | 33 | 2019-07-31 | 2019-07-31 |  |
| 35 | 3.3.4 | Training | 100e%? | 2019-08-01 | 2019-08-01 | 34 | 2019-08-01 | 2019-08-01 |  |
| 36 | 3.3.5 | Data Post-Processing | 50e%? | 2019-08-02 | 2019-08-02 | 35 | 2019-08-02 | 2019-08-02 |  |
| 37 | 3.3.6 | Validation | 25e% | 2019-08-02 | 2019-08-02 | 36 | 2019-08-02 | 2019-08-02 |  |
| 38 | 3.3.7 | Evaluation | 25e% | 2019-08-02 | 2019-08-02 | 37 | 2019-08-02 | 2019-08-02 |  |
| 39 | 3.3.8 | Sprint Review/Planning | 100e%? | 2019-08-03 | 2019-08-03 | 38 | 2019-08-03 | 2019-08-03 |  |
| 40 | 3.4 | **Sprint 4** | 600e%? | 2019-08-05 | 2019-08-10 |  | 2019-08-05 | 2019-08-10 |  |
| 41 | 3.4.1 | Model adjustment/refinement | 100e%? | 2019-08-05 | 2019-08-05 | 39 | 2019-08-05 | 2019-08-05 |  |
| 42 | 3.4.2 | Feature additions | 200e%? | 2019-08-06 | 2019-08-07 | 41 | 2019-08-06 | 2019-08-07 |  |
| 43 | 3.4.3 | Training | 100e%? | 2019-08-08 | 2019-08-08 | 42 | 2019-08-08 | 2019-08-08 |  |
| 44 | 3.4.4 | Validation | 25e% | 2019-08-09 | 2019-08-09 | 43 | 2019-08-09 | 2019-08-09 |  |
| 45 | 3.4.5 | Evaluation | 50e% | 2019-08-09 | 2019-08-09 | 44 | 2019-08-09 | 2019-08-09 |  |
| 46 | 3.4.6 | Results preperation | 25e% | 2019-08-09 | 2019-08-09 | 45 | 2019-08-09 | 2019-08-09 |  |
| 47 | 3.4.7 | Sprint Review | 100e%? | 2019-08-10 | 2019-08-10 | 46 | 2019-08-10 | 2019-08-10 |  |
| 48 | 4 | **TESTING** | 600e%? | 2019-08-12 | 2019-08-17 |  | 2019-08-12 | 2019-08-17 |  |
| 49 | 4.1 | Pipeline Deployment (new videos) | 300e%? | 2019-08-12 | 2019-08-14 | 47 | 2019-08-12 | 2019-08-14 |  |
| 50 | 4.2 | Evaluation | 100e%? | 2019-08-15 | 2019-08-15 | 49 | 2019-08-15 | 2019-08-15 |  |
| 51 | 4.3 | Compile statistics (performance) | 200e% | 2019-08-16 | 2019-08-17 | 50 | 2019-08-16 | 2019-08-17 |  |
| 52 | 5 | **PRESENTATION** | 1000e%? | 2019-08-19 | 2019-08-29 |  | 2019-08-19 | 2019-08-29 |  |
| 53 | 5.1 | Research Compilation | 100e%? | 2019-08-19 | 2019-08-19 | 51 | 2019-08-19 | 2019-08-19 | Jason |
| 54 | 5.2 | Graphics creation | 300e%? | 2019-08-19 | 2019-08-21 | 51 | 2019-08-19 | 2019-08-21 | Tyson |
| 55 | 5.3 | Text compilation | 100e%? | 2019-08-20 | 2019-08-20 | 53 | 2019-08-20 | 2019-08-20 | Jason |
| 56 | 5.4 | Presentation PP/Keynote creation | 200e%? | 2019-08-22 | 2019-08-23 | 54, 55 | 2019-08-22 | 2019-08-23 |  |

| ID | WBS | Task | Type | Duration | Start | Finish | Predecessors | Baseline start | Baseline finish | Constraint | Deadline | Resources |
| --- | --- | --- | --- | --- | --- | --- | --- | --- | --- | --- | --- | --- |
| 57 | 5.5 | **Poster** |  | 200e%? | 2019-08-24 | 2019-08-26 |  | 2019-08-24 | 2019-08-26 |  |  |  |
| 58 | 5.5.1 | Poster Design |  | 100e%? | 2019-08-24 | 2019-08-24 | 56 | 2019-08-24 | 2019-08-24 |  |  |  |
| 59 | 5.5.2 | Poster printing |  | 100e%? | 2019-08-26 | 2019-08-26 | 58 | 2019-08-26 | 2019-08-26 |  |  |  |
| 60 | 5.6 | Staff inspection of Projects | milestone | 100e% | 2019-08-27 | 2019-08-27 | 56, 57 | 2019-08-27 | 2019-08-27 | must start on 2019-08-27 | 2019-08-27 |  |
| 61 | 5.7 | Open Day |  | 100e% | 2019-08-29 | 2019-08-29 | 60 | 2019-08-29 | 2019-08-29 | start no earlier than 2019-08-29 | 2019-08-29 |  |
| 62 | 6 | **REPORTING** |  | 1300e%? | 2019-08-30 | 2019-09-13 |  | 2019-08-30 | 2019-09-13 |  |  |  |
| 63 | 6.1 | Report Compilation |  | 500e% | 2019-08-30 | 2019-09-04 | 61 | 2019-08-30 | 2019-09-04 |  |  |  |
| 64 | 6.2 | Project Submission |  | 0e%? | 2019-09-05 | 2019-09-05 | 63 | 2019-09-05 | 2019-09-05 | must start on 2019-09-05 | 2019-09-05 |  |
| 65 | 6.3 | Conference Preperation |  | 600e%? | 2019-09-05 | 2019-09-11 | 64 | 2019-09-05 | 2019-09-11 |  |  |  |
| 66 | 6.4 | Lab Conference |  | 200e%? | 2019-09-12 | 2019-09-13 | 65 | 2019-09-12 | 2019-09-13 | must start on 2019-09-12 | 2019-09-13 |  |
| 67 | 7 | **MONITORING** |  | 4112.5e%? | 2019-07-02 | 2019-08-19 |  | 2019-07-02 | 2019-08-19 |  |  |  |
| 68 | 7.1 | Project Title Change Deadline | milestone | 0e% | 2019-07-02 | 2019-07-02 |  | 2019-07-02 | 2019-07-02 | finish no later than 2019-08-16 | 2019-08-16 |  |
| 69 | 7.2 | Meeting with Supervisor |  | 12.5e% | 2019-07-15 | 2019-07-15 |  | 2019-07-15 | 2019-07-15 | start no earlier than 2019-07-15 |  | Tyson; Jason; Dr Hunt |
| 70 | 7.3 | Meeting with Supervisor |  | 12.5e% | 2019-07-22 | 2019-07-22 |  | 2019-07-22 | 2019-07-22 | start no earlier than 2019-07-22 |  | Tyson; Jason; Dr Hunt |
| 71 | 7.4 | Meeting with Supervisor |  | 12.5e% | 2019-07-29 | 2019-07-29 |  | 2019-07-29 | 2019-07-29 | start no earlier than 2019-07-29 |  | Tyson; Jason; Dr Hunt |
| 72 | 7.5 | Meeting with Supervisor |  | 12.5e% | 2019-08-05 | 2019-08-05 |  | 2019-08-05 | 2019-08-05 | start no earlier than 2019-08-05 |  | Tyson; Jason; Dr Hunt |
| 73 | 7.6 | Meeting with Supervisor |  | 12.5e% | 2019-08-12 | 2019-08-12 |  | 2019-08-12 | 2019-08-12 | start no earlier than 2019-08-12 |  | Tyson; Jason; Dr Hunt |
| 74 | 7.7 | Meeting with Supervisor |  | 12.5e% | 2019-08-19 | 2019-08-19 |  | 2019-08-19 | 2019-08-19 | start no earlier than 2019-08-19 |  | Tyson; Jason; Dr Hunt |
| 75 | 7.8 | Risk Register reevaluation |  | 100e%? | 2019-08-01 | 2019-08-01 |  | 2019-08-01 | 2019-08-01 | start no earlier than 2019-08-01 |  | Tyson; Jason; Dr Hunt |
