# Raiden

Schedule from ProjectLibre, 2019-07-02 to 2019-09-11.

## Calendars

- Standard: Mon-Sat 08:00-12:00, 13:00-17:00; Sun off.

## Resources

| Resource | Group | Rate |
| --- | --- | --- |
| Unassigned |  |  |
| Tyson |  |  |
| Jason |  |  |
| Dr Hunt |  |  |
| AWS - EC2 (p3.2xlarge) | Cloud | 3 |
| AWS - S3 | Cloud | 25 |
| ML Computer | Hardware |  |
| Video Library (labelled) | Footage |  |
| Video Library (unlabelled) | Footage |  |
| Test Footage | Footage |  |
| HS Spreadsheet | Spreadsheet |  |

## Schedule

| ID | WBS | Task | Type | Duration | Start | Finish | Predecessors | Constraint | Deadline | Resources |
| --- | --- | --- | --- | --- | --- | --- | --- | --- | --- | --- |
| 1 | 1 | Project Start | milestone | 100e% | 2019-07-02 | 2019-07-02 |  |  |  |  |
| 2 | 2 | **PLANNING** |  | 1000e%? | 2019-07-03 | 2019-07-13 |  |  |  |  |
| 3 | 2.1 | PM scheduling |  | 200e%? | 2019-07-03 | 2019-07-04 |  | start no earlier than 2019-07-03 |  |  |
| 4 | 2.2 | Hardware and environment setup |  | 300e% | 2019-07-08 | 2019-07-10 |  | start no earlier than 2019-07-08 |  | Tyson; ML Computer |
| 5 | 2.3 | Data Aquisition |  | 50e%? | 2019-07-03 | 2019-07-03 |  |  |  | Dr Hunt; Tyson; Video Library (labelled) |
| 6 | 2.4 | **Deep Learning Research** |  | 600e%? | 2019-07-05 | 2019-07-11 | 3 |  |  |  |
| 7 | 2.4.1 | Tensorflow/keras tutorial |  | 100e%? | 2019-07-05 | 2019-07-05 |  |  |  |  |
| 8 | 2.4.2 | Object detection tutorial |  | 100e%? | 2019-07-06 | 2019-07-06 | 7 |  |  |  |
| 9 | 2.4.3 | ML Model exploration |  | 400e% | 2019-07-08 | 2019-07-11 | 8 |  |  | Tyson; Jason |
| 10 | 2.5 | **Data preprocessing scripts** |  | 1000e%? | 2019-07-03 | 2019-07-13 |  |  |  |  |
| 11 | 2.5.1 | Cine to Image sequence |  | 100e%? | 2019-07-05 | 2019-07-05 | 3 |  |  | Test Footage; Tyson |
| 12 | 2.5.2 | Spreadsheet <-> JSON/CSV metadata |  | 100e%? | 2019-07-03 | 2019-07-03 |  |  |  | HS Spreadsheet; Jason |
| 13 | 2.5.3 | Training Data input pre/post processing |  | 200e%? | 2019-07-12 | 2019-07-13 | 9, 11 |  |  |  |
| 14 | 2.6 | Scope and requirements |  | 100e%? | 2019-07-12 | 2019-07-12 | 6 |  |  | Tyson; Jason |
| 15 | 2.7 | Project Plan Compilation |  | 100e% | 2019-07-13 | 2019-07-13 | 14 | finish no later than 2019-07-15 |  | Tyson; Jason |
| 16 | 2.8 | Project Plan Submission | milestone | 0e% | 2019-07-13 | 2019-07-13 | 15 | finish no later than 2019-07-15 | 2019-07-15 | Tyson; Jason |
| 17 | 3 | **EXECUTION** |  | 2400e%? | 2019-07-15 | 2019-08-10 |  |  |  |  |
| 18 | 3.1 | **Sprint 1** |  | 600e%? | 2019-07-15 | 2019-07-20 |  |  |  |  |
| 19 | 3.1.1 | Initial Model Selection/ A.D |  | 100e% | 2019-07-15 | 2019-07-15 | 2 | must start on 2019-07-15 |  |  |
| 20 | 3.1.2 | Pipeline setup |  | 200e%? | 2019-07-16 | 2019-07-17 | 19 |  |  |  |
| 21 | 3.1.3 | Data preperation |  | 25e% | 2019-07-18 | 2019-07-18 | 20 |  |  |  |
| 22 | 3.1.4 | Training |  | 100e%? | 2019-07-18 | 2019-07-19 | 21 |  |  |  |
| 23 | 3.1.5 | Validation |  | 25e% | 2019-07-19 | 2019-07-19 | 22 |  |  |  |
| 24 | 3.1.6 | Evaluation |  | 50e% | 2019-07-19 | 2019-07-19 | 23 |  |  |  |
| 25 | 3.1.7 | Sprint Review |  | 100e%? | 2019-07-20 | 2019-07-20 | 24 |  |  |  |

| ID | WBS | Task | Duration | Start | Finish | Predecessors |
| --- | --- | --- | --- | --- | --- | --- |
| 26 | 3.2 | **Sprint 2** | 600e%? | 2019-07-22 | 2019-07-27 |  |
| 27 | 3.2.1 | Model adjustment/refinement | 100e%? | 2019-07-22 | 2019-07-22 | 25 |
| 28 | 3.2.2 | Feature additions | 200e%? | 2019-07-23 | 2019-07-24 | 27 |
| 29 | 3.2.3 | Data preperation | 25e% | 2019-07-25 | 2019-07-25 | 28 |
| 30 | 3.2.4 | Training | 100e%? | 2019-07-25 | 2019-07-26 | 29 |
| 31 | 3.2.5 | Validation | 25e% | 2019-07-26 | 2019-07-26 | 30 |
| 32 | 3.2.6 | Evaluation | 50e% | 2019-07-26 | 2019-07-26 | 31 |
| 33 | 3.2.7 | Sprint Review | 100e%? | 2019-07-27 | 2019-07-27 | 32 |
| 34 | 3.3 | **Sprint 3** | 600e%? | 2019-07-29 | 2019-08-03 |  |
| 35 | 3.3.1 | Model adjustment/refinement | 100e%? | 2019-07-29 | 2019-07-29 | 33 |
| 36 | 3.3.2 | Feature additions | 200e%? | 2019-07-30 | 2019-07-31 | 35 |
| 37 | 3.3.3 | Data preperation | 25e% | 2019-08-01 | 2019-08-01 | 36 |
| 38 | 3.3.4 | Training | 100e%? | 2019-08-01 | 2019-08-02 | 37 |
| 39 | 3.3.5 | Validation | 25e% | 2019-08-02 | 2019-08-02 | 38 |
| 40 | 3.3.6 | Evaluation | 50e% | 2019-08-02 | 2019-08-02 | 39 |
| 41 | 3.3.7 | Sprint Review | 100e%? | 2019-08-03 | 2019-08-03 | 40 |
| 42 | 3.4 | **Sprint 4** | 600e%? | 2019-08-05 | 2019-08-10 |  |
| 43 | 3.4.1 | Model adjustment/refinement | 100e%? | 2019-08-05 | 2019-08-05 | 41 |
| 44 | 3.4.2 | Feature additions | 200e%? | 2019-08-06 | 2019-08-07 | 43 |
| 45 | 3.4.3 | Data preperation | 25e% | 2019-08-08 | 2019-08-08 | 44 |
| 46 | 3.4.4 | Training | 100e%? | 2019-08-08 | 2019-08-09 | 45 |
| 47 | 3.4.5 | Validation | 25e% | 2019-08-09 | 2019-08-09 | 46 |
| 48 | 3.4.6 | Evaluation | 50e% | 2019-08-09 | 2019-08-09 | 47 |
| 49 | 3.4.7 | Sprint Review | 100e%? | 2019-08-10 | 2019-08-10 | 48 |

| ID | WBS | Task | Type | Duration | Start | Finish | Predecessors | Constraint | Deadline | Resources |
| --- | --- | --- | --- | --- | --- | --- | --- | --- | --- | --- |
| 50 | 4 | **TESTING** |  | 600e%? | 2019-08-12 | 2019-08-17 |  |  |  |  |
| 51 | 4.1 | Pipeline Deployment (new videos) |  | 400e%? | 2019-08-12 | 2019-08-15 | 49 |  |  |  |
| 52 | 4.2 | Compile statistics (performance) |  | 200e% | 2019-08-16 | 2019-08-17 | 51 |  |  |  |
| 53 | 5 | **PRESENTATION** |  | 1000e%? | 2019-08-19 | 2019-08-29 |  |  |  |  |
| 54 | 5.1 | Research Compilation |  | 100e%? | 2019-08-19 | 2019-08-19 | 52 |  |  |  |
| 55 | 5.2 | Graphics creation |  | 300e%? | 2019-08-19 | 2019-08-21 | 52 |  |  |  |
| 56 | 5.3 | Text compilation |  | 100e%? | 2019-08-20 | 2019-08-20 | 54 |  |  |  |
| 57 | 5.4 | Presentation PP/Keynote creation |  | 100e%? | 2019-08-22 | 2019-08-22 | 55, 56 |  |  |  |
| 58 | 5.5 | **Poster** |  | 200e%? | 2019-08-23 | 2019-08-24 |  |  |  |  |
| 59 | 5.5.1 | Poster Design |  | 100e%? | 2019-08-23 | 2019-08-23 | 57 |  |  |  |
| 60 | 5.5.2 | Poster printing |  | 100e%? | 2019-08-24 | 2019-08-24 | 59 |  |  |  |
| 61 | 5.6 | Staff inspection of Projects | milestone | 100e% | 2019-08-27 | 2019-08-27 | 57, 58 | must start on 2019-08-27 | 2019-08-27 |  |
| 62 | 5.7 | Open Day |  | 100e% | 2019-08-29 | 2019-08-29 | 61 | start no earlier than 2019-08-29 | 2019-08-29 |  |
| 63 | 6 | **REPORTING** |  | 2700e%? | 2019-08-12 | 2019-09-11 |  |  |  |  |
| 64 | 6.1 | Report Compilation |  | 500e% | 2019-08-12 | 2019-08-16 | 17 |  |  |  |
| 65 | 6.2 | Project Submission |  | 0e% | 2019-08-16 | 2019-08-16 | 64 | finish no later than 2019-09-06 | 2019-09-05 |  |
| 66 | 6.3 | Lab Conference |  | 200e%? | 2019-09-10 | 2019-09-11 |  | must finish on 2019-09-12 | 2019-09-12 |  |
| 67 | 7 | **MONITORING** |  | 4112.5e%? | 2019-07-02 | 2019-08-19 |  |  |  |  |
| 68 | 7.1 | Project Title Change Deadline | milestone | 0e% | 2019-07-02 | 2019-07-02 |  | finish no later than 2019-08-16 | 2019-08-16 |  |
| 69 | 7.2 | Meeting with Supervisor |  | 12.5e% | 2019-07-15 | 2019-07-15 |  | start no earlier than 2019-07-15 |  | Tyson; Jason; Dr Hunt |
| 70 | 7.3 | Meeting with Supervisor |  | 12.5e% | 2019-07-22 | 2019-07-22 |  | start no earlier than 2019-07-22 |  | Tyson; Jason; Dr Hunt |
| 71 | 7.4 | Meeting with Supervisor |  | 12.5e% | 2019-07-29 | 2019-07-29 |  | start no earlier than 2019-07-29 |  | Tyson; Jason; Dr Hunt |
| 72 | 7.5 | Meeting with Supervisor |  | 12.5e% | 2019-08-05 | 2019-08-05 |  | start no earlier than 2019-08-05 |  | Tyson; Jason; Dr Hunt |
| 73 | 7.6 | Meeting with Supervisor |  | 12.5e% | 2019-08-12 | 2019-08-12 |  | start no earlier than 2019-08-12 |  | Tyson; Jason; Dr Hunt |
| 74 | 7.7 | Meeting with Supervisor |  | 12.5e% | 2019-08-19 | 2019-08-19 |  | start no earlier than 2019-08-19 |  | Tyson; Jason; Dr Hunt |
| 75 | 7.8 | Risk Register reevaluation |  | 100e%? | 2019-08-01 | 2019-08-01 |  | start no earlier than 2019-08-01 |  | Tyson; Jason; Dr Hunt |
