# Raiden

Schedule from ProjectLibre, 2019-07-02 to 2019-09-11.

## Calendars

- Standard: Mon-Sat 08:00-12:00, 13:00-17:00; Sun off.

## Resources

| Resource | Group | Rate |
| --- | --- | --- |
| Unassigned |  |  |
| Tyson |  |  |
| Jason |  |  |
| Dr Hunt |  |  |
| AWS - EC2 (p3.2xlarge) | Cloud | 3 |
| AWS - S3 | Cloud | 25 |
| ML Computer | Hardware |  |
| Video Library (labelled) | Footage |  |
| Video Library (unlabelled) | Footage |  |
| Test Footage | Footage |  |
| HS Spreadsheet | Spreadsheet |  |

## Schedule

| ID | WBS | Task | Type | Duration | Start | Finish | Predecessors | Constraint | Deadline | Resources |
| --- | --- | --- | --- | --- | --- | --- | --- | --- | --- | --- |
| 1 | 1 | Project Start | milestone | 100e% | 2019-07-02 | 2019-07-02 |  |  |  |  |
| 2 | 2 | **PLANNING** |  | 1100e%? | 2019-07-03 | 2019-07-15 |  |  |  |  |
| 3 | 2.1 | PM scheduling |  | 200e%? | 2019-07-03 | 2019-07-04 |  | start no earlier than 2019-07-03 |  |  |
| 4 | 2.2 | Hardware and environment setup |  | 300e% | 2019-07-08 | 2019-07-10 |  | start no earlier than 2019-07-08 |  | Tyson; ML Computer |
| 5 | 2.3 | Data Aquisition |  | 50e%? | 2019-07-15 | 2019-07-15 |  | start no earlier than 2019-07-15 |  | Dr Hunt; Tyson; Video Library (labelled) |
| 6 | 2.4 | Scope and requirements |  | 100e%? | 2019-07-15 | 2019-07-15 |  |  |  | Tyson; Jason |
| 7 | 2.5 | Project Plan Compilation |  | 300e% | 2019-07-13 | 2019-07-13 | 6 | finish no later than 2019-07-15 |  | Tyson; Jason |
| 8 | 2.6 | Project Plan Submission | milestone | 0e% | 2019-07-15 | 2019-07-15 | 7 | finish no later than 2019-07-15 | 2019-07-15 | Tyson; Jason |
| 9 | 3 | **EXECUTION** |  | 2100e%? | 2019-07-15 | 2019-08-07 |  |  |  |  |
| 10 | 3.1 | **Sprint 1** |  | 600e%? | 2019-07-15 | 2019-07-20 |  |  |  |  |
| 11 | 3.1.1 | **Data preprocessing scripts** |  | 600e%? | 2019-07-15 | 2019-07-20 |  |  |  |  |
| 12 | 3.1.1.1 | Cine to Image sequence |  | 100e%? | 2019-07-15 | 2019-07-15 | 3 | start no earlier than 2019-07-15 |  | Test Footage; Tyson |
| 13 | 3.1.1.2 | Spreadsheet <-> JSON/CSV metadata |  | 100e%? | 2019-07-15 | 2019-07-15 |  | start no earlier than 2019-07-15 |  | HS Spreadsheet; Jason |
| 14 | 3.1.1.3 | Training Data input pre/post processing |  | 200e%? | 2019-07-19 | 2019-07-20 | 12, 19 |  |  |  |
| 15 | 3.1.1.4 | Consultation with Isazi |  | 100e%? | 2019-07-16 | 2019-07-16 |  | start no earlier than 2019-07-16 |  |  |
| 16 | 3.1.2 | **Deep Learning Research** |  | 400e%? | 2019-07-15 | 2019-07-18 | 3 |  |  |  |
| 17 | 3.1.2.1 | Tensorflow/keras tutorial |  | 100e%? | 2019-07-15 | 2019-07-15 |  |  |  |  |
| 18 | 3.1.2.2 | Object detection tutorial |  | 100e%? | 2019-07-16 | 2019-07-16 | 17 |  |  |  |
| 19 | 3.1.2.3 | ML Model exploration |  | 200e% | 2019-07-17 | 2019-07-18 | 18 |  |  | Tyson; Jason |
| 20 | 3.1.3 | Initial Model Selection/ A.D |  | 100e% | 2019-07-15 | 2019-07-15 | 15 | must start on 2019-07-15 |  |  |
| 21 | 3.1.4 | Data preperation |  | 200e% | 2019-07-15 | 2019-07-16 |  |  |  |  |
| 22 | 3.1.5 | Sprint Review |  | 100e%? | 2019-07-17 | 2019-07-17 | 21 |  |  |  |
| 23 | 3.2 | **Sprint 2** |  | 600e%? | 2019-07-18 | 2019-07-24 |  |  |  |  |
| 24 | 3.2.1 | Model adjustment/refinement |  | 100e%? | 2019-07-18 | 2019-07-18 | 22 |  |  |  |
| 25 | 3.2.2 | Feature additions |  | 200e%? | 2019-07-19 | 2019-07-20 | 24 |  |  |  |
| 26 | 3.2.3 | Data preperation |  | 25e% | 2019-07-22 | 2019-07-22 | 25 |  |  |  |
| 27 | 3.2.4 | Training |  | 100e%? | 2019-07-22 | 2019-07-23 | 26 |  |  |  |
| 28 | 3.2.5 | Validation |  | 25e% | 2019-07-23 | 2019-07-23 | 27 |  |  |  |
| 29 | 3.2.6 | Evaluation |  | 50e% | 2019-07-23 | 2019-07-23 | 28 |  |  |  |
| 30 | 3.2.7 | Sprint Review |  | 100e%? | 2019-07-24 | 2019-07-24 | 29 |  |  |  |

| ID | WBS | Task | Duration | Start | Finish | Predecessors |
| --- | --- | --- | --- | --- | --- | --- |
| 31 | 3.3 | **Sprint 3** | 600e%? | 2019-07-25 | 2019-07-31 |  |
| 32 | 3.3.1 | Model adjustment/refinement | 100e%? | 2019-07-25 | 2019-07-25 | 30 |
| 33 | 3.3.2 | Feature additions | 200e%? | 2019-07-26 | 2019-07-27 | 32 |
| 34 | 3.3.3 | Data preperation | 25e% | 2019-07-29 | 2019-07-29 | 33 |
| 35 | 3.3.4 | Training | 100e%? | 2019-07-29 | 2019-07-30 | 34 |
| 36 | 3.3.5 | Validation | 25e% | 2019-07-30 | 2019-07-30 | 35 |
| 37 | 3.3.6 | Evaluation | 50e% | 2019-07-30 | 2019-07-30 | 36 |
| 38 | 3.3.7 | Sprint Review | 100e%? | 2019-07-31 | 2019-07-31 | 37 |
| 39 | 3.4 | **Sprint 4** | 600e%? | 2019-08-01 | 2019-08-07 |  |
| 40 | 3.4.1 | Model adjustment/refinement | 100e%? | 2019-08-01 | 2019-08-01 | 38 |
| 41 | 3.4.2 | Feature additions | 200e%? | 2019-08-02 | 2019-08-03 | 40 |
| 42 | 3.4.3 | Data preperation | 25e% | 2019-08-05 | 2019-08-05 | 41 |
| 43 | 3.4.4 | Training | 100e%? | 2019-08-05 | 2019-08-06 | 42 |
| 44 | 3.4.5 | Validation | 25e% | 2019-08-06 | 2019-08-06 | 43 |
| 45 | 3.4.6 | Evaluation | 50e% | 2019-08-06 | 2019-08-06 | 44 |
| 46 | 3.4.7 | Sprint Review | 100e%? | 2019-08-07 | 2019-08-07 | 45 |
| 47 | 4 | **TESTING** | 600e%? | 2019-08-08 | 2019-08-14 |  |
| 48 | 4.1 | Pipeline Deployment (new videos) | 400e%? | 2019-08-08 | 2019-08-12 | 46 |
| 49 | 4.2 | Compile statistics (performance) | 200e% | 2019-08-13 | 2019-08-14 | 48 |
| 50 | 5 | **PRESENTATION** | 1300e%? | 2019-08-15 | 2019-08-29 |  |
| 51 | 5.1 | Research Compilation | 100e%? | 2019-08-15 | 2019-08-15 | 49 |
| 52 | 5.2 | Graphics creation | 300e%? | 2019-08-15 | 2019-08-17 | 49 |
| 53 | 5.3 | Text compilation | 100e%? | 2019-08-16 | 2019-08-16 | 51 |
| 54 | 5.4 | Presentation PP/Keynote creation | 200e%? | 2019-08-19 | 2019-08-20 | 52, 53 |

| ID | WBS | Task | Type | Duration | Start | Finish | Predecessors | Constraint | Deadline | Resources |
| --- | --- | --- | --- | --- | --- | --- | --- | --- | --- | --- |
| 55 | 5.5 | **Poster** |  | 200e%? | 2019-08-21 | 2019-08-22 |  |  |  |  |
| 56 | 5.5.1 | Poster Design |  | 100e%? | 2019-08-21 | 2019-08-21 | 54 |  |  |  |
| 57 | 5.5.2 | Poster printing |  | 100e%? | 2019-08-22 | 2019-08-22 | 56 |  |  |  |
| 58 | 5.6 | Staff inspection of Projects | milestone | 100e% | 2019-08-27 | 2019-08-27 | 54, 55 | must start on 2019-08-27 | 2019-08-27 |  |
| 59 | 5.7 | Open Day |  | 100e% | 2019-08-29 | 2019-08-29 | 58 | start no earlier than 2019-08-29 | 2019-08-29 |  |
| 60 | 6 | **REPORTING** |  | 2400e%? | 2019-08-15 | 2019-09-11 |  |  |  |  |
| 61 | 6.1 | Report Compilation |  | 500e% | 2019-08-15 | 2019-08-20 | 49 |  |  |  |
| 62 | 6.2 | Project Submission |  | 0e% | 2019-08-20 | 2019-08-20 | 61 | finish no later than 2019-09-06 | 2019-09-05 |  |
| 63 | 6.3 | Lab Conference |  | 200e%? | 2019-09-10 | 2019-09-11 |  | must finish on 2019-09-12 | 2019-09-12 |  |
| 64 | 7 | **MONITORING** |  | 4112.5e%? | 2019-07-02 | 2019-08-19 |  |  |  |  |
| 65 | 7.1 | Project Title Change Deadline | milestone | 0e% | 2019-07-02 | 2019-07-02 |  | finish no later than 2019-08-16 | 2019-08-16 |  |
| 66 | 7.2 | Meeting with Supervisor |  | 12.5e% | 2019-07-15 | 2019-07-15 |  | start no earlier than 2019-07-15 |  | Tyson; Jason; Dr Hunt |
| 67 | 7.3 | Meeting with Supervisor |  | 12.5e% | 2019-07-22 | 2019-07-22 |  | start no earlier than 2019-07-22 |  | Tyson; Jason; Dr Hunt |
| 68 | 7.4 | Meeting with Supervisor |  | 12.5e% | 2019-07-29 | 2019-07-29 |  | start no earlier than 2019-07-29 |  | Tyson; Jason; Dr Hunt |
| 69 | 7.5 | Meeting with Supervisor |  | 12.5e% | 2019-08-05 | 2019-08-05 |  | start no earlier than 2019-08-05 |  | Tyson; Jason; Dr Hunt |
| 70 | 7.6 | Meeting with Supervisor |  | 12.5e% | 2019-08-12 | 2019-08-12 |  | start no earlier than 2019-08-12 |  | Tyson; Jason; Dr Hunt |
| 71 | 7.7 | Meeting with Supervisor |  | 12.5e% | 2019-08-19 | 2019-08-19 |  | start no earlier than 2019-08-19 |  | Tyson; Jason; Dr Hunt |
| 72 | 7.8 | Risk Register reevaluation |  | 100e%? | 2019-08-01 | 2019-08-01 |  | start no earlier than 2019-08-01 |  | Tyson; Jason; Dr Hunt |
