# Raiden

Schedule from MS Project, 2019-07-02 to 2019-09-13, A marks actual dates.

## Calendars

- Standard: Mon-Sat 08:00-12:00, 13:00-17:00; Sun off.

## Resources

| Resource | Group | Rate |
| --- | --- | --- |
| Unassigned |  |  |
| Tyson |  |  |
| Jason |  |  |
| Dr Hunt |  |  |
| AWS - EC2 (p3.2xlarge) | Cloud | 3 |
| AWS - S3 | Cloud | 25 |
| ML Computer | Hardware |  |
| Video Library (labelled) | Footage |  |
| Video Library (unlabelled) | Footage |  |
| Test Footage | Footage |  |
| HS Spreadsheet | Spreadsheet |  |

## Schedule

| ID | WBS | Task | Type | Duration | Start | Finish | Predecessors | Complete | Remaining | Baseline start | Baseline finish | Baseline duration | Total slack | Free slack | Constraint | Deadline | Resources | Work | Actual work |
| --- | --- | --- | --- | --- | --- | --- | --- | --- | --- | --- | --- | --- | --- | --- | --- | --- | --- | --- | --- |
| 1 | 1 | Project Start | milestone | 1d | 2019-07-02 A | 2019-07-02 A |  | 100% |  | 2019-07-02 | 2019-07-02 | 0d |  |  |  |  |  |  |  |
| 2 | 2 | **PLANNING** |  | 10d | 2019-07-03 A | 2019-07-15 |  | 87% | 1.35d | 2019-07-03 | 2019-07-13 | 0d | 52.75d |  |  |  |  | 106.67h | 81.78h |
| 3 | 2.1 | PM scheduling |  | 2d | 2019-07-03 A | 2019-07-05 A | 1 | 100% |  | 2019-07-03 | 2019-07-04 | 0d |  |  | start no earlier than 2019-07-03 |  |  |  |  |
| 4 | 2.2 | Hardware and environment setup |  | 3d | 2019-07-08 A | 2019-07-11 A | 1 | 100% |  | 2019-07-08 | 2019-07-10 | 0d |  |  | start no earlier than 2019-07-08 |  | Tyson; ML Computer | 21.33h | 21.33h |
| 5 | 2.3 | **Deep Learning Research** |  | 6d | 2019-07-05 A | 2019-07-12 | 3 | 71% | 1.75d | 2019-07-05 | 2019-07-11 | 0d | 54.75d |  |  |  |  | 56.89h | 32h |
| 6 | 2.3.1 | Tensorflow/keras tutorial |  | 1d | 2019-07-05 A | 2019-07-06 A |  | 100% |  | 2019-07-05 | 2019-07-05 | 0d |  |  |  |  |  |  |  |
| 7 | 2.3.2 | Object detection tutorial |  | 1d | 2019-07-06 A | 2019-07-08 A | 6 | 100% |  | 2019-07-06 | 2019-07-06 | 0d |  |  |  |  |  |  |  |
| 8 | 2.3.3 | ML Model exploration |  | 4d | 2019-07-08 A | 2019-07-12 | 7 | 56% | 1.75d | 2019-07-08 | 2019-07-11 | 0d | 54.75d |  |  |  | Tyson; Jason | 56.89h | 32h |
| 9 | 2.4 | Scope and requirements |  | 1d | 2019-07-12 A | 2019-07-13 A | 5 | 100% |  | 2019-07-12 | 2019-07-12 | 0d |  |  |  |  | Tyson; Jason | 14.22h | 14.22h |
| 10 | 2.5 | Project Plan Compilation |  | 1d | 2019-07-13 A | 2019-07-15 A | 9 | 100% |  | 2019-07-13 | 2019-07-13 | 0d |  |  | finish no later than 2019-07-15 |  | Tyson; Jason | 14.22h | 14.22h |
| 11 | 2.6 | Project Plan Submission | milestone | 0d | 2019-07-15 | 2019-07-15 | 10 |  |  | 2019-07-13 | 2019-07-13 | 0d | 0.75d |  | start no earlier than 2019-07-15 | 2019-07-15 | Tyson; Jason |  |  |
| 12 | 3 | **EXECUTION** |  | 24d | 2019-07-15 A | 2019-08-12 |  |  | 23.98d | 2019-07-15 | 2019-08-10 | 0d | 28.75d |  |  |  |  | 23.53h | 0.4h |
| 13 | 3.1 | **Sprint 1** |  | 6d | 2019-07-15 A | 2019-07-22 |  |  | 5.99d | 2019-07-15 | 2019-07-20 | 0d | 46.75d |  |  |  |  | 23.53h | 0.4h |
| 14 | 3.1.1 | Data Aquisition |  | 1d | 2019-07-15 A | 2019-07-16 | 10 | 3% | 0.97d | 2019-07-15 | 2019-07-15 | 0d | -0.25d | 0d | start no earlier than 2019-07-15 |  | Dr Hunt; Tyson; Video Library (labelled) | 16h | 0.4h |
| 15 | 3.1.2 | Manual Data Labelling |  | 5d | 2019-07-16 | 2019-07-22 | 14 |  |  | 2019-07-16 | 2019-07-20 | 0d | 46.75d |  | start no earlier than 2019-07-15 |  |  |  |  |
| 16 | 3.1.3 | **Pipeline setup** |  | 4d | 2019-07-16 | 2019-07-20 |  |  |  | 2019-07-16 | 2019-07-19 | 0d | -0.25d | 0d |  |  |  | 7.53h |  |
| 17 | 3.1.3.1 | Cine to image sequence script |  | 1d | 2019-07-16 | 2019-07-17 | 14 |  |  | 2019-07-16 | 2019-07-16 | 0d | -0.25d | 0d |  |  | Test Footage; Tyson | 3.76h |  |
| 18 | 3.1.3.2 | Export CINE to Image sequence |  | 1d | 2019-07-17 | 2019-07-18 | 17 |  |  | 2019-07-17 | 2019-07-17 | 0d | 49.75d |  |  |  |  |  |  |
| 19 | 3.1.3.3 | Spreadsheet <-> JSON/CSV metadata |  | 1d | 2019-07-16 | 2019-07-17 | 14 |  |  | 2019-07-16 | 2019-07-16 | 0d | 50.75d |  |  |  | HS Spreadsheet; Jason | 3.76h |  |
| 20 | 3.1.3.4 | Training Data input pre-processing |  | 2d | 2019-07-17 | 2019-07-19 | 17, 14 |  |  | 2019-07-17 | 2019-07-18 | 0d | -0.25d | 0d |  |  |  |  |  |
| 21 | 3.1.3.5 | Time to frame scripts |  | 1d | 2019-07-19 | 2019-07-20 | 14, 20 |  |  | 2019-07-19 | 2019-07-19 | 0d | -0.25d | 0d | start no earlier than 2019-07-19 |  |  |  |  |
| 22 | 3.1.4 | Sprint Review/Planning |  | 1d | 2019-07-20 | 2019-07-22 | 21 |  |  | 2019-07-20 | 2019-07-20 | 0d | -0.25d | 0d |  |  |  |  |  |
| 23 | 3.2 | **Sprint 2** |  | 6d | 2019-07-22 | 2019-07-29 |  |  |  | 2019-07-22 | 2019-07-27 | 0d | -0.25d | 0d |  |  |  |  |  |
| 24 | 3.2.1 | Model selection - Network 1 (Individual images) |  | 1d | 2019-07-22 | 2019-07-23 | 22 |  |  | 2019-07-22 | 2019-07-22 | 0d | -0.25d | 0d |  |  |  |  |  |
| 25 | 3.2.2 | Feature development |  | 1d | 2019-07-23 | 2019-07-24 | 24 |  |  | 2019-07-23 | 2019-07-23 | 0d | -0.25d | 0d |  |  |  |  |  |
| 26 | 3.2.3 | Data preperation |  | 1.5d | 2019-07-24 | 2019-07-25 | 25 |  |  | 2019-07-24 | 2019-07-25 | 0d | -0.25d | 0d |  |  |  |  |  |
| 27 | 3.2.4 | Training |  | 1d | 2019-07-25 | 2019-07-26 | 26 |  |  | 2019-07-25 | 2019-07-26 | 0d | -0.25d | 0d |  |  |  |  |  |
| 28 | 3.2.5 | Validation |  | 0.25d | 2019-07-26 | 2019-07-26 | 27 |  |  | 2019-07-26 | 2019-07-26 | 0d | -0.25d | 0d |  |  |  |  |  |
| 29 | 3.2.6 | Evaluation |  | 0.25d | 2019-07-27 | 2019-07-27 | 28 |  |  | 2019-07-26 | 2019-07-26 | 0d | -0.25d | 0d |  |  |  |  |  |
| 30 | 3.2.7 | Sprint Review/Planning |  | 1d | 2019-07-27 | 2019-07-29 | 29 |  |  | 2019-07-27 | 2019-07-27 | 0d | -0.25d | 0d |  |  |  |  |  |

| ID | WBS | Task | Duration | Start | Finish | Predecessors | Baseline start | Baseline finish | Baseline duration | Total slack | Free slack | Resources | Work |
| --- | --- | --- | --- | --- | --- | --- | --- | --- | --- | --- | --- | --- | --- |
| 31 | 3.3 | **Sprint 3** | 6d | 2019-07-29 | 2019-08-05 |  | 2019-07-29 | 2019-08-03 | 0d | -0.25d | 0d |  |  |
| 32 | 3.3.1 | Model Selection - Network 2 (Video events) | 1d | 2019-07-29 | 2019-07-30 | 30 | 2019-07-29 | 2019-07-29 | 0d | -0.25d | 0d |  |  |
| 33 | 3.3.2 | Feature additions | 1d | 2019-07-30 | 2019-07-31 | 32 | 2019-07-30 | 2019-07-30 | 0d | -0.25d | 0d |  |  |
| 34 | 3.3.3 | Data preperation | 1d | 2019-07-31 | 2019-08-01 | 33 | 2019-07-31 | 2019-07-31 | 0d | -0.25d | 0d |  |  |
| 35 | 3.3.4 | Training | 1d | 2019-08-01 | 2019-08-02 | 34 | 2019-08-01 | 2019-08-01 | 0d | -0.25d | 0d |  |  |
| 36 | 3.3.5 | Data Post-Processing | 0.5d | 2019-08-02 | 2019-08-02 | 35 | 2019-08-02 | 2019-08-02 | 0d | -0.25d | 0d |  |  |
| 37 | 3.3.6 | Validation | 0.25d | 2019-08-02 | 2019-08-02 | 36 | 2019-08-02 | 2019-08-02 | 0d | -0.25d | 0d |  |  |
| 38 | 3.3.7 | Evaluation | 0.25d | 2019-08-03 | 2019-08-03 | 37 | 2019-08-02 | 2019-08-02 | 0d | -0.25d | 0d |  |  |
| 39 | 3.3.8 | Sprint Review/Planning | 1d | 2019-08-03 | 2019-08-05 | 38 | 2019-08-03 | 2019-08-03 | 0d | -0.25d | 0d |  |  |
| 40 | 3.4 | **Sprint 4** | 6d | 2019-08-05 | 2019-08-12 |  | 2019-08-05 | 2019-08-10 | 0d | -0.25d | 0d |  |  |
| 41 | 3.4.1 | Model adjustment/refinement | 1d | 2019-08-05 | 2019-08-06 | 39 | 2019-08-05 | 2019-08-05 | 0d | -0.25d | 0d |  |  |
| 42 | 3.4.2 | Feature additions | 2d | 2019-08-06 | 2019-08-08 | 41 | 2019-08-06 | 2019-08-07 | 0d | -0.25d | 0d |  |  |
| 43 | 3.4.3 | Training | 1d | 2019-08-08 | 2019-08-09 | 42 | 2019-08-08 | 2019-08-08 | 0d | -0.25d | 0d |  |  |
| 44 | 3.4.4 | Validation | 0.25d | 2019-08-09 | 2019-08-09 | 43 | 2019-08-09 | 2019-08-09 | 0d | -0.25d | 0d |  |  |
| 45 | 3.4.5 | Evaluation | 0.5d | 2019-08-09 | 2019-08-09 | 44 | 2019-08-09 | 2019-08-09 | 0d | -0.25d | 0d |  |  |
| 46 | 3.4.6 | Results preperation | 0.25d | 2019-08-10 | 2019-08-10 | 45 | 2019-08-09 | 2019-08-09 | 0d | -0.25d | 0d |  |  |
| 47 | 3.4.7 | Sprint Review | 1d | 2019-08-10 | 2019-08-12 | 46 | 2019-08-10 | 2019-08-10 | 0d | -0.25d | 0d |  |  |
| 48 | 4 | **TESTING** | 6d | 2019-08-12 | 2019-08-19 |  | 2019-08-12 | 2019-08-17 | 0d | -0.25d | 0d |  |  |
| 49 | 4.1 | Pipeline Deployment (new videos) | 3d | 2019-08-12 | 2019-08-15 | 47 | 2019-08-12 | 2019-08-14 | 0d | -0.25d | 0d |  |  |
| 50 | 4.2 | Evaluation | 1d | 2019-08-15 | 2019-08-16 | 49 | 2019-08-15 | 2019-08-15 | 0d | -0.25d | 0d |  |  |
| 51 | 4.3 | Compile statistics (performance) | 2d | 2019-08-16 | 2019-08-19 | 50 | 2019-08-16 | 2019-08-17 | 0d | -0.25d | 0d |  |  |
| 52 | 5 | **PRESENTATION** | 9.75d | 2019-08-19 | 2019-08-29 |  | 2019-08-19 | 2019-08-29 | 0d | -0.25d | 0d |  | 18.82h |
| 53 | 5.1 | Research Compilation | 1d | 2019-08-19 | 2019-08-20 | 51 | 2019-08-19 | 2019-08-19 | 0d | 0.75d | 0d | Jason | 3.76h |
| 54 | 5.2 | Graphics creation | 3d | 2019-08-19 | 2019-08-22 | 51 | 2019-08-19 | 2019-08-21 | 0d | -0.25d | 0d | Tyson | 11.29h |
| 55 | 5.3 | Text compilation | 1d | 2019-08-20 | 2019-08-21 | 53 | 2019-08-20 | 2019-08-20 | 0d | 0.75d |  | Jason | 3.76h |
| 56 | 5.4 | Presentation PP/Keynote creation | 2d | 2019-08-22 | 2019-08-24 | 54, 55 | 2019-08-22 | 2019-08-23 | 0d | -0.25d | 0d |  |  |

| ID | WBS | Task | Type | Duration | Start | Finish | Predecessors | Baseline start | Baseline finish | Baseline duration | Total slack | Free slack | Constraint | Deadline | Resources | Work |
| --- | --- | --- | --- | --- | --- | --- | --- | --- | --- | --- | --- | --- | --- | --- | --- | --- |
| 57 | 5.5 | **Poster** |  | 2d | 2019-08-24 | 2019-08-27 |  | 2019-08-24 | 2019-08-26 | 0d | -0.25d | 0d |  |  |  |  |
| 58 | 5.5.1 | Poster Design |  | 1d | 2019-08-24 | 2019-08-26 | 56 | 2019-08-24 | 2019-08-24 | 0d | -0.25d | 0d |  |  |  |  |
| 59 | 5.5.2 | Poster printing |  | 1d | 2019-08-26 | 2019-08-27 | 58 | 2019-08-26 | 2019-08-26 | 0d | -0.25d | 0d |  |  |  |  |
| 60 | 5.6 | Staff inspection of Projects | milestone | 1d | 2019-08-27 | 2019-08-27 | 56, 57 | 2019-08-27 | 2019-08-27 | 0d | -0.25d | 0d | must start on 2019-08-27 | 2019-08-27 |  |  |
| 61 | 5.7 | Open Day |  | 1d | 2019-08-29 | 2019-08-29 | 60 | 2019-08-29 | 2019-08-29 | 0d | 0d |  | start no earlier than 2019-08-29 | 2019-08-29 |  |  |
| 62 | 6 | **REPORTING** |  | 13d | 2019-08-30 | 2019-09-13 |  | 2019-08-30 | 2019-09-13 | 0d | 0d |  |  |  |  |  |
| 63 | 6.1 | Report Compilation |  | 5d | 2019-08-30 | 2019-09-04 | 61 | 2019-08-30 | 2019-09-04 | 0d | 0d |  |  |  |  |  |
| 64 | 6.2 | Project Submission | milestone | 0d | 2019-09-05 | 2019-09-05 | 63 | 2019-09-05 | 2019-09-05 | 0d | 0d |  | must start on 2019-09-05 | 2019-09-05 |  |  |
| 65 | 6.3 | Conference Preperation |  | 6d | 2019-09-05 | 2019-09-11 | 64 | 2019-09-05 | 2019-09-11 | 0d | 0d |  |  |  |  |  |
| 66 | 6.4 | Lab Conference |  | 2d | 2019-09-12 | 2019-09-13 | 65 | 2019-09-12 | 2019-09-13 | 0d | 0d |  | must start on 2019-09-12 | 2019-09-13 |  |  |
| 67 | 7 | **MONITORING** |  | 41.13d | 2019-07-02 | 2019-08-19 |  | 2019-07-02 | 2019-08-19 | 0d | 22.87d |  |  |  |  | 26.02h |
| 68 | 7.1 | Project Title Change Deadline | milestone | 0d | 2019-07-02 | 2019-07-02 |  | 2019-07-02 | 2019-07-02 | 0d | 39d |  | finish no later than 2019-08-16 | 2019-08-16 |  |  |
| 69 | 7.2 | Meeting with Supervisor |  | 0.13d | 2019-07-15 | 2019-07-15 |  | 2019-07-15 | 2019-07-15 | 0d | 52.62d |  | start no earlier than 2019-07-15 |  | Tyson; Jason; Dr Hunt | 0.28h |
| 70 | 7.3 | Meeting with Supervisor |  | 0.13d | 2019-07-22 | 2019-07-22 |  | 2019-07-22 | 2019-07-22 | 0d | 46.87d |  | start no earlier than 2019-07-22 |  | Tyson; Jason; Dr Hunt | 0.35h |
| 71 | 7.4 | Meeting with Supervisor |  | 0.13d | 2019-07-29 | 2019-07-29 |  | 2019-07-29 | 2019-07-29 | 0d | 40.87d |  | start no earlier than 2019-07-29 |  | Tyson; Jason; Dr Hunt | 0.35h |
| 72 | 7.5 | Meeting with Supervisor |  | 0.13d | 2019-08-05 | 2019-08-05 |  | 2019-08-05 | 2019-08-05 | 0d | 34.87d |  | start no earlier than 2019-08-05 |  | Tyson; Jason; Dr Hunt | 0.35h |
| 73 | 7.6 | Meeting with Supervisor |  | 0.13d | 2019-08-12 | 2019-08-12 |  | 2019-08-12 | 2019-08-12 | 0d | 28.87d |  | start no earlier than 2019-08-12 |  | Tyson; Jason; Dr Hunt | 0.35h |
| 74 | 7.7 | Meeting with Supervisor |  | 0.13d | 2019-08-19 | 2019-08-19 |  | 2019-08-19 | 2019-08-19 | 0d | 22.87d |  | start no earlier than 2019-08-19 |  | Tyson; Jason; Dr Hunt | 0.35h |
| 75 | 7.8 | Risk Register reevaluation |  | 1d | 2019-08-01 | 2019-08-01 |  | 2019-08-01 | 2019-08-01 | 0d | 37d |  | start no earlier than 2019-08-01 |  | Tyson; Jason; Dr Hunt | 24h |
